# 智维集控平台

Schedule from a web Gantt chart, 2026-06-08 to 2026-07-17.
Every day is a working day

## Schedule

| ID | WBS | Task | Duration | Start | Finish | Predecessors | Status |
| --- | --- | --- | --- | --- | --- | --- | --- |
| 2 | 1 | **平台基础能力** | 11d | 2026-06-08 | 2026-06-18 |  |  |
| 3 | 1.1 | 数据权限管理 | 2d | 2026-06-08 | 2026-06-09 |  |  |
| 4 | 1.2 | 租户管理 | 2d | 2026-06-10 | 2026-06-11 | 3 | waiting |
| 5 | 1.3 | 国际化 | 2d | 2026-06-12 | 2026-06-13 | 4 | waiting |
| 6 | 1.4 | 组织权限管理 | 3d | 2026-06-14 | 2026-06-16 | 5 | waiting |
| 7 | 1.5 | 审计日志 | 2d | 2026-06-17 | 2026-06-18 | 6 | waiting |
| 8 | 2 | **3.6.6 配置管理优化与电站快速接入能力建设** | 21d | 2026-06-19 | 2026-07-09 |  |  |
| 9 | 2.1 | 场站管理 | 2d | 2026-06-19 | 2026-06-20 | 2 | waiting |
| 10 | 2.2 | 设备类型管理 | 1d | 2026-06-21 | 2026-06-21 | 9 | waiting |
| 11 | 2.3 | 设备型号管理 | 1d | 2026-06-22 | 2026-06-22 | 10 | waiting |
| 12 | 2.4 | 设备管理 | 2d | 2026-06-23 | 2026-06-24 | 11 | waiting |
| 13 | 2.5 | 测点管理 | 2d | 2026-06-28 | 2026-06-29 | 21 | waiting |
| 14 | 2.6 | 测点物模型映射配置 | 2d | 2026-06-30 | 2026-07-01 | 13 | waiting |
| 15 | 2.7 | 测点计算规则配置 | 2d | 2026-07-02 | 2026-07-03 | 14 | waiting |
| 16 | 2.8 | 告警规则配置 | 1d | 2026-07-04 | 2026-07-04 | 15 | waiting |
| 17 | 2.9 | 告警屏蔽管理 | 1d | 2026-07-05 | 2026-07-05 | 16 | waiting |
| 18 | 2.10 | 告警通知管理 | 2d | 2026-07-06 | 2026-07-07 | 17 | waiting |
| 19 | 2.11 | 数据清洗规则管理 | 1d | 2026-07-08 | 2026-07-08 | 18 | waiting |
| 20 | 2.12 | 数据补录规则管理 | 1d | 2026-07-09 | 2026-07-09 | 19 | waiting |
| 21 | 3 | **3.5.1 一体化驾驶舱指标体系梳理** | 3d | 2026-06-25 | 2026-06-27 |  |  |
| 22 | 3.1 | 指标管理 | 1d | 2026-06-25 | 2026-06-25 | 12 | waiting |
| 23 | 3.2 | 物模型管理 | 2d | 2026-06-26 | 2026-06-27 | 22 | waiting |
| 24 | 4 | **3.5.3 一体化驾驶舱指标数据计算引擎开发** | 8d | 2026-07-10 | 2026-07-17 |  |  |
| 25 | 4.1 | MQTT通讯前置服务 | 2d | 2026-07-10 | 2026-07-11 | 8 | waiting |
| 26 | 4.2 | 实时/历史流数据处理引擎 | 5d | 2026-07-12 | 2026-07-16 | 25 | waiting |
| 27 | 4.3 | 数据清洗服务 | 1d | 2026-07-17 | 2026-07-17 | 26 | waiting |
